# Пример плана проекта

Schedule from MS Project, 2019-10-17 to 2020-02-26, costs in р..

## Calendars

- Стандартный: Mon-Fri 09:00-13:00, 14:00-18:00; Sat-Sun off.

## Resources

| Resource | Group | Rate |
| --- | --- | --- |
| РП Исполнителя | Исполнитель | 1000 |
| Аналитик | Исполнитель | 1000 |
| Программист | Исполнитель | 1000 |
| РП Заказчика | Заказчик |  |
| ФЗ | Заказчик |  |
| Пользователи | Заказчик |  |

## Schedule

| ID | WBS | Task | Type | Duration | Start | Finish | Predecessors | Total slack | Resources | Work | Cost |
| --- | --- | --- | --- | --- | --- | --- | --- | --- | --- | --- | --- |
| 1 | 1 | **Подготовка к проекту** |  | 7d | 2019-10-17 | 2019-10-25 |  | 0d |  | 160h | 80,000 |
| 2 | 1.1 | Анализ целей и сбор информации для составления планов и устава проекта |  | 3d | 2019-10-17 | 2019-10-21 |  | 0d | Аналитик; РП Заказчика; РП Исполнителя; ФЗ | 96h | 48,000 |
| 3 | 1.2 | Разработка устава проекта |  | 3d | 2019-10-22 | 2019-10-24 | 2 | 0d | РП Заказчика; РП Исполнителя | 48h | 24,000 |
| 4 | 1.3 | Согласование устава проекта |  | 1d | 2019-10-25 | 2019-10-25 | 3 | 0d | РП Заказчика; РП Исполнителя | 16h | 8,000 |
| 5 | 2 | **Анализ и моделирование** |  | 25d | 2019-10-25 | 2019-11-29 |  | 0d |  | 328h | 152,000 |
| 6 | 2.1 | Предоплата этапа "Анализ и моделирование" | milestone | 0d | 2019-10-25 | 2019-10-25 | 4 | 0d | РП Заказчика; РП Исполнителя |  |  |
| 7 | 2.2 | Совещания по ознакомлению ФЗ с методами работы |  | 1d | 2019-10-28 | 2019-10-28 | 6 | 0d | Аналитик; Пользователи; РП Заказчика; ФЗ | 32h | 8,000 |
| 8 | 2.3 | Интервьюирование ФЗ |  | 4d | 2019-10-29 | 2019-11-01 | 7 | 0d | Аналитик; ФЗ | 64h | 32,000 |
| 9 | 2.4 | Обучение ФЗ и моделирование процессов заказчика в типовом решении |  | 5d | 2019-11-04 | 2019-11-08 | 8 | 0d | Аналитик; ФЗ | 80h | 40,000 |
| 10 | 2.5 | Составление и согласование с ФЗ функциональных требований, их классификация и ранжирование |  | 5d | 2019-11-11 | 2019-11-15 | 9 | 0d | Аналитик; ФЗ | 80h | 40,000 |
| 11 | 2.6 | Согласование и подписание ФТ |  | 3d | 2019-11-18 | 2019-11-20 | 10 | 0d | РП Заказчика; РП Исполнителя | 48h | 24,000 |
| 12 | 2.7 | Подписание Акта по Этапу "Анализ и моделирование" | milestone | 1d | 2019-11-21 | 2019-11-21 | 11 | 0d | РП Заказчика; РП Исполнителя | 16h | 8,000 |
| 13 | 2.8 | Окончательная оплата Этапа "Анализ и моделирование" |  | 1d | 2019-11-29 | 2019-11-29 | 12FS+5d | 63d | РП Заказчика | 8h |  |
| 14 | 3 | **Проектирование** |  | 19d? | 2019-11-22 | 2019-12-18 |  | 0d |  | 128h | 96,000 |
| 15 | 3.1 | Предоплата этапа "Проектирование" |  | 1d? | 2019-11-22 | 2019-11-22 | 12 | 0d | РП Заказчика | 8h |  |
| 16 | 3.2 | Разработка технического задания |  | 10d | 2019-11-25 | 2019-12-06 | 15 | 0d | Аналитик | 80h | 80,000 |
| 17 | 3.3 | Согласование и подписание ТЗ |  | 1d? | 2019-12-09 | 2019-12-09 | 16 | 0d | Аналитик; ФЗ | 16h | 8,000 |
| 18 | 3.4 | Подписание акта по этапу "Проектирование" | milestone | 1d? | 2019-12-10 | 2019-12-10 | 17 | 0d | РП Заказчика; РП Исполнителя | 16h | 8,000 |
| 19 | 3.5 | Окончательная оплата Этапа "Проектирование" |  | 1d? | 2019-12-18 | 2019-12-18 | 18FS+5d | 50d | РП Заказчика | 8h |  |
| 20 | 4 | **Конфигурирование ПО** |  | 22d | 2019-12-11 | 2020-01-09 |  | 0d |  | 224h | 168,000 |
| 21 | 4.1 | Предоплата этапа "Конфигурирование ПО" |  | 1d | 2019-12-11 | 2019-12-11 | 18 | 0d | РП Заказчика | 8h |  |
| 22 | 4.2 | Разработка тестовых примеров |  | 5d | 2019-12-11 | 2019-12-17 | 18 | 7d | ФЗ | 40h |  |
| 23 | 4.3 | Конфигурирование изменений типовой конфигурации |  | 10d | 2019-12-12 | 2019-12-25 | 21, 22FF-1d | 0d | Программист | 80h | 80,000 |
| 24 | 4.4 | Тестирование и устранение ошибок |  | 5d | 2019-12-26 | 2020-01-01 | 23 | 0d | Аналитик; Программист | 80h | 80,000 |
| 25 | 4.5 | Подписание протоколов тестирования |  | 1d | 2020-01-02 | 2020-01-02 | 24 | 0d | Аналитик; ФЗ | 16h | 8,000 |
| 26 | 4.6 | Подписание акта по этапу "Конфигурирование ПО" | milestone | 0d | 2020-01-02 | 2020-01-02 | 25 | 0d | РП Заказчика; РП Исполнителя |  |  |
| 27 | 4.7 | Окончательный платеж по этапу "Конфигурирование" | milestone | 0d | 2020-01-09 | 2020-01-09 | 26FS+5d | 34d | РП Заказчика |  |  |

| ID | WBS | Task | Type | Duration | Start | Finish | Predecessors | Total slack | Resources | Work | Cost |
| --- | --- | --- | --- | --- | --- | --- | --- | --- | --- | --- | --- |
| 28 | 5 | **Подготовка к ОПЭ** |  | 12d | 2020-01-03 | 2020-01-20 |  | 0d |  | 224h | 88,000 |
| 29 | 5.1 | Предоплата этапа "Подготовка ОПЭ" |  | 1d | 2020-01-03 | 2020-01-03 | 26 | 0d | РП Заказчика | 8h |  |
| 30 | 5.2 | Развертывание системы на серверах заказчика |  | 1d | 2020-01-06 | 2020-01-06 | 29 | 4d | Программист | 8h | 8,000 |
| 31 | 5.3 | Обучение пользователей |  | 5d | 2020-01-06 | 2020-01-10 | 29 | 0d | Аналитик; Пользователи | 80h | 40,000 |
| 32 | 5.4 | Перенос перенос и выверка данных |  | 5d | 2020-01-13 | 2020-01-17 | 31, 30 | 0d | Программист; ФЗ; Пользователи | 120h | 40,000 |
| 33 | 5.5 | Подписание акта по этапу "Подготовка к ОПЭ" | milestone | 0d | 2020-01-17 | 2020-01-17 | 32 | 0d | РП Заказчика; РП Исполнителя |  |  |
| 34 | 5.6 | Окончательная оплата этапа "Подготовка к ОПЭ" |  | 1d | 2020-01-20 | 2020-01-20 | 33 | 27d | РП Заказчика | 8h |  |
| 35 | 6 | **ОПЭ** |  | 23d? | 2020-01-20 | 2020-02-19 |  | 0d |  | 352h | 328,000 |
| 36 | 6.1 | Предоплата по этапу "ОПЭ" |  | 1d? | 2020-01-20 | 2020-01-20 | 33 | 0d | РП Заказчика | 8h |  |
| 37 | 6.2 | Консультирование пользователей в ходе ОПЭ |  | 20d | 2020-01-21 | 2020-02-17 | 36 | 0d | Аналитик | 160h | 160,000 |
| 38 | 6.3 | Исправление обнаруженных ошибок |  | 20d | 2020-01-21 | 2020-02-17 | 36 | 0d | Программист | 160h | 160,000 |
| 39 | 6.4 | Подписание акта об окончании "ОПЭ" | milestone | 1d | 2020-02-18 | 2020-02-18 | 38, 37 | 0d | РП Заказчика; РП Исполнителя | 16h | 8,000 |
| 40 | 6.5 | Окончательный платеж по этапу "ОПЭ" |  | 1d | 2020-02-19 | 2020-02-19 | 39 | 5d | РП Заказчика | 8h |  |
| 41 | 7 | **Завершение проекта** |  | 6d | 2020-02-19 | 2020-02-26 |  | 0d |  | 48h | 48,000 |
| 42 | 7.1 | Подготовка и подписание у клиента отзыва |  | 5d | 2020-02-19 | 2020-02-25 | 39 | 0d | РП Исполнителя | 40h | 40,000 |
| 43 | 7.2 | Размещение всех материалов по проекту в архиве |  | 1d | 2020-02-26 | 2020-02-26 | 42 | 0d | РП Исполнителя | 8h | 8,000 |
