Schedule from MS Project, 2024-03-06 to 2024-07-16, costs in р., A marks actual dates.

## Calendars

- Стандартный: Mon-Fri 09:00-13:00, 14:00-18:00; Sat-Sun off. Exceptions (off unless hours are given): 2024-03-08 (8 марта), 2024-05-01 (1 мая), 2024-05-09 (9 мая).

## Resources

| Resource | Group | Rate |
| --- | --- | --- |
| РП Исполнителя | Исполнитель | 1000 |
| Аналитик | Исполнитель | 1000 |
| Программист | Исполнитель | 1000 |
| РП Заказчика | Заказчик |  |
| ФЗ | Заказчик |  |
| Пользователи | Заказчик |  |

## Schedule

| ID | WBS | Task | Type | Duration | Start | Finish | Predecessors | Complete | Resources | Work | Actual work | Cost | Actual cost |
| --- | --- | --- | --- | --- | --- | --- | --- | --- | --- | --- | --- | --- | --- |
| 1 | 1 | **Подготовка к проекту** |  | 6d | 2024-03-06 A | 2024-03-14 A |  | 100% |  | 136h | 136h | 80,000 | 80,000 |
| 2 | 1.1 | Анализ целей и сбор информации для составления проекта |  | 3d | 2024-03-06 A | 2024-03-08 A |  | 100% | Аналитик; РП Заказчика; РП Исполнителя | 72h | 72h | 48,000 | 48,000 |
| 3 | 1.2 | Разработка проекта |  | 3d | 2024-03-11 A | 2024-03-13 A | 2 | 100% | РП Заказчика; РП Исполнителя | 48h | 48h | 24,000 | 24,000 |
| 4 | 1.3 | Согласование проекта |  | 1d | 2024-03-14 A | 2024-03-14 A | 3 | 100% | РП Заказчика; РП Исполнителя | 16h | 16h | 8,000 | 8,000 |
| 5 | 2 | **Анализ и моделирование** |  | 25d | 2024-03-14 A | 2024-04-18 A |  | 100% |  | 208h | 208h | 152,000 | 152,000 |
| 6 | 2.1 | Предоплата этапа "Анализ и моделирование" | milestone | 0d | 2024-03-14 A | 2024-03-14 A | 4 | 100% | РП Заказчика; РП Исполнителя |  |  |  |  |
| 7 | 2.2 | Совещания по ознакомлению с работой |  | 1d | 2024-03-15 A | 2024-03-15 A | 6 | 100% | Аналитик; Пользователи; РП Заказчика | 24h | 24h | 8,000 | 8,000 |
| 8 | 2.3 | Интервьюирование |  | 4d | 2024-03-18 A | 2024-03-21 A | 7 | 100% | Аналитик | 32h | 32h | 32,000 | 32,000 |
| 9 | 2.4 | Обучение и моделирование процессов заказчика в типовом решении |  | 5d | 2024-03-22 A | 2024-03-28 A | 8 | 100% | Аналитик | 40h | 40h | 40,000 | 40,000 |
| 10 | 2.5 | Составление и согласование с функциональными требованиями |  | 5d | 2024-03-29 A | 2024-04-04 A | 9 | 100% | Аналитик | 40h | 40h | 40,000 | 40,000 |
| 11 | 2.6 | Согласование и подписание ФТ |  | 3d | 2024-04-05 A | 2024-04-09 A | 10 | 100% | РП Заказчика; РП Исполнителя | 48h | 48h | 24,000 | 24,000 |
| 12 | 2.7 | Подписание Акта по Этапу "Анализ и моделирование" | milestone | 1d | 2024-04-10 A | 2024-04-10 A | 11 | 100% | РП Заказчика; РП Исполнителя | 16h | 16h | 8,000 | 8,000 |
| 13 | 2.8 | Окончательная оплата Этапа "Анализ и моделирование" |  | 1d | 2024-04-18 A | 2024-04-18 A | 12FS+5d | 100% | РП Заказчика | 8h | 8h |  |  |
| 14 | 3 | **Проектирование** |  | 18d? | 2024-04-11 A | 2024-05-07 A |  | 100% |  | 120h | 120h | 96,000 | 96,000 |
| 15 | 3.1 | Предоплата этапа "Проектирование" |  | 1d? | 2024-04-11 A | 2024-04-11 A | 12 | 100% | РП Заказчика | 8h | 8h |  |  |
| 16 | 3.2 | Разработка ТЗ |  | 10d | 2024-04-12 A | 2024-04-25 A | 15 | 100% | Аналитик | 80h | 80h | 80,000 | 80,000 |
| 17 | 3.3 | Согласование и подписание ТЗ |  | 1d? | 2024-04-26 A | 2024-04-26 A | 16 | 100% | Аналитик | 8h | 8h | 8,000 | 8,000 |
| 18 | 3.4 | Подписание акта по этапу "Проектирование" | milestone | 1d? | 2024-04-29 A | 2024-04-29 A | 17 | 100% | РП Заказчика; РП Исполнителя | 16h | 16h | 8,000 | 8,000 |
| 19 | 3.5 | Окончательная оплата Этапа "Проектирование" |  | 1d? | 2024-05-07 A | 2024-05-07 A | 18FS+5d | 100% | РП Заказчика | 8h | 8h |  |  |
| 20 | 4 | **Конфигурирование ПО** |  | 20d | 2024-04-30 A | 2024-05-29 A |  | 100% |  | 176h | 176h | 168,000 | 168,000 |
| 21 | 4.1 | Предоплата этапа "Конфигурирование ПО" |  | 1d | 2024-04-30 A | 2024-04-30 A | 18 | 100% | РП Заказчика | 8h | 8h |  |  |
| 22 | 4.2 | Разработка тестовых примеров |  | 5d | 2024-04-30 A | 2024-05-06 A | 18 | 100% |  |  |  |  |  |
| 23 | 4.3 | Конфигурирование изменений типовой конфигурации |  | 10d | 2024-05-01 A | 2024-05-14 A | 21, 22FF-1d | 100% | Программист | 80h | 80h | 80,000 | 80,000 |
| 24 | 4.4 | Тестирование и устранение ошибок |  | 5d | 2024-05-15 A | 2024-05-21 A | 23 | 100% | Аналитик; Программист | 80h | 80h | 80,000 | 80,000 |
| 25 | 4.5 | Подписание протоколов тестирования |  | 1d | 2024-05-22 A | 2024-05-22 A | 24 | 100% | Аналитик | 8h | 8h | 8,000 | 8,000 |
| 26 | 4.6 | Подписание акта по этапу "Конфигурирование ПО" | milestone | 0d | 2024-05-22 A | 2024-05-22 A | 25 | 100% | РП Заказчика; РП Исполнителя |  |  |  |  |
| 27 | 4.7 | Окончательный платеж по этапу "Конфигурирование" | milestone | 0d | 2024-05-29 A | 2024-05-29 A | 26FS+5d | 100% | РП Заказчика |  |  |  |  |

| ID | WBS | Task | Type | Duration | Start | Finish | Predecessors | Complete | Resources | Work | Actual work | Cost | Actual cost |
| --- | --- | --- | --- | --- | --- | --- | --- | --- | --- | --- | --- | --- | --- |
| 28 | 5 | **Подготовка к ОПЭ** |  | 12d | 2024-05-23 A | 2024-06-07 A |  | 100% |  | 224h | 224h | 88,000 | 88,000 |
| 29 | 5.1 | Предоплата этапа "Подготовка ОПЭ" |  | 1d | 2024-05-23 A | 2024-05-23 A | 26 | 100% | РП Заказчика | 8h | 8h |  |  |
| 30 | 5.2 | Развертывание системы на серверах заказчика |  | 1d | 2024-05-24 A | 2024-05-24 A | 29 | 100% | Программист | 8h | 8h | 8,000 | 8,000 |
| 31 | 5.3 | Обучение пользователей |  | 5d | 2024-05-24 A | 2024-05-30 A | 29 | 100% | Аналитик; Пользователи | 80h | 80h | 40,000 | 40,000 |
| 32 | 5.4 | Перенос и выверка данных |  | 5d | 2024-05-31 A | 2024-06-06 A | 31, 30 | 100% | Программист; ФЗ; Пользователи | 120h | 120h | 40,000 | 40,000 |
| 33 | 5.5 | Подписание акта по этапу "Подготовка к ОПЭ" | milestone | 0d | 2024-06-06 A | 2024-06-06 A | 32 | 100% | РП Заказчика; РП Исполнителя |  |  |  |  |
| 34 | 5.6 | Окончательная оплата этапа "Подготовка к ОПЭ" |  | 1d | 2024-06-07 A | 2024-06-07 A | 33 | 100% | РП Заказчика | 8h | 8h |  |  |
| 35 | 6 | **Оптыно-промышленная эксплуатация** |  | 23d? | 2024-06-07 A | 2024-07-09 A |  | 100% |  | 352h | 352h | 328,000 | 328,000 |
| 36 | 6.1 | Предоплата по этапу "ОПЭ" |  | 1d? | 2024-06-07 A | 2024-06-07 A | 33 | 100% | РП Заказчика | 8h | 8h |  |  |
| 37 | 6.2 | Консультирование пользователей в ходе ОПЭ |  | 20d | 2024-06-10 A | 2024-07-05 A | 36 | 100% | Аналитик | 160h | 160h | 160,000 | 160,000 |
| 38 | 6.3 | Исправление обнаруженных ошибок |  | 20d | 2024-06-10 A | 2024-07-05 A | 36 | 100% | Программист | 160h | 160h | 160,000 | 160,000 |
| 39 | 6.4 | Подписание акта об окончании "ОПЭ" | milestone | 1d | 2024-07-08 A | 2024-07-08 A | 38, 37 | 100% | РП Заказчика; РП Исполнителя | 16h | 16h | 8,000 | 8,000 |
| 40 | 6.5 | Окончательный платеж по этапу "ОПЭ" |  | 1d | 2024-07-09 A | 2024-07-09 A | 39 | 100% | РП Заказчика | 8h | 8h |  |  |
| 41 | 7 | **Завершение проекта** |  | 6d | 2024-07-09 A | 2024-07-16 A |  | 100% |  | 48h | 48h | 48,000 | 48,000 |
| 42 | 7.1 | Подготовка и подписание у клиента отзыва |  | 5d | 2024-07-09 A | 2024-07-15 A | 39 | 100% | РП Исполнителя | 40h | 40h | 40,000 | 40,000 |
| 43 | 7.2 | Размещение всех материалов по проекту в архиве |  | 1d | 2024-07-16 A | 2024-07-16 A | 42 | 100% | РП Исполнителя | 8h | 8h | 8,000 | 8,000 |
