# Новое предприятие

Schedule from MS Project, 2019-10-17 to 2020-04-07, status date 2019-10-24, costs in р..

## Calendars

- Стандартный: Mon-Fri 09:00-13:00, 14:00-18:00; Sat-Sun off.

## Resources

| Resource | Rate |
| --- | --- |
| Бизнес-консультант | 100 |
| Коллеги по бизнесу | 100 |
| Юрист | 100 |
| Государственное учреждение | 100 |
| Руководитель | 100 |
| Владельцы | 100 |
| Бухгалтер | 100 |
| Банкир | 100 |
| Информационные службы | 100 |

## Schedule

| ID | WBS | Task | Type | Duration | Start | Finish | Predecessors | Total slack | Free slack | Resources | Work | Cost |
| --- | --- | --- | --- | --- | --- | --- | --- | --- | --- | --- | --- | --- |
| 1 | 1 | **Этап 1 - Стратегическое планирование** |  | 23d | 2019-10-17 | 2019-11-18 |  | 0d |  |  | 240h | 24,000 |
| 2 | 1.1 | **Самооценка** |  | 3d | 2019-10-17 | 2019-10-21 |  | 0d |  |  | 32h | 3,200 |
| 3 | 1.1.1 | Формирование представления о новом предприятии |  | 1d | 2019-10-17 | 2019-10-17 |  | 0d |  | Руководитель | 8h | 800 |
| 4 | 1.1.2 | Определение имеющихся умений, навыков, информации и поддержки |  | 1d | 2019-10-18 | 2019-10-18 | 3 | 0d |  | Бизнес-консультант; Руководитель | 16h | 1,600 |
| 5 | 1.1.3 | Принятие решения о продолжении |  | 1d | 2019-10-21 | 2019-10-21 | 4 | 0d |  | Руководитель | 8h | 800 |
| 6 | 1.2 | **Определение перспектив** |  | 10d | 2019-10-22 | 2019-11-04 |  | 0d |  |  | 96h | 9,600 |
| 7 | 1.2.1 | Исследование рынка и конкуренции |  | 1d | 2019-10-22 | 2019-10-22 | 5 | 0d |  | Бизнес-консультант | 8h | 800 |
| 8 | 1.2.2 | Опрос владельцев подобных предприятий |  | 5d | 2019-10-23 | 2019-10-29 | 7 | 0d |  | Владельцы | 40h | 4,000 |
| 9 | 1.2.3 | Определение необходимых ресурсов |  | 2d | 2019-10-30 | 2019-10-31 | 8 | 0d |  | Бизнес-консультант; Коллеги по бизнесу | 32h | 3,200 |
| 10 | 1.2.4 | Определение составляющих операционных затрат |  | 2d | 2019-11-01 | 2019-11-04 | 9 | 0d |  | Бухгалтер | 16h | 1,600 |
| 11 | 1.3 | **Оценка бизнес-подходов** |  | 4d | 2019-11-05 | 2019-11-08 |  | 0d |  |  | 32h | 3,200 |
| 12 | 1.3.1 | Определение требований к новому предприятию |  | 1d | 2019-11-05 | 2019-11-05 | 10 | 0d |  | Руководитель | 8h | 800 |
| 13 | 1.3.2 | Оценка возможностей приобретения готового предприятия |  | 1d | 2019-11-06 | 2019-11-06 | 12 | 0d |  | Руководитель | 8h | 800 |
| 14 | 1.3.3 | Рассмотрение возможностей франчайзинга |  | 1d | 2019-11-07 | 2019-11-07 | 13 | 0d |  | Руководитель | 8h | 800 |
| 15 | 1.3.4 | Суммирование данных о возможных подходах |  | 1d | 2019-11-08 | 2019-11-08 | 14 | 0d |  | Руководитель | 8h | 800 |
| 16 | 1.4 | **Оценка потенциальных рисков и доходов** |  | 7d | 2019-11-06 | 2019-11-14 |  | 3d |  |  | 80h | 8,000 |
| 17 | 1.4.1 | Оценка емкости и стабильности рынка |  | 2d | 2019-11-06 | 2019-11-07 | 12 | 104d | 0d | Бизнес-консультант | 16h | 1,600 |
| 18 | 1.4.2 | Оценка уровня конкуренции |  | 1d | 2019-11-08 | 2019-11-08 | 17 | 104d | 0d | Бизнес-консультант | 8h | 800 |
| 19 | 1.4.3 | Оценка потребности в ресурсах |  | 2d | 2019-11-11 | 2019-11-12 | 18 | 104d | 0d | Бизнес-консультант | 16h | 1,600 |
| 20 | 1.4.4 | Оценка реальной начальной доли рынка |  | 1d | 2019-11-13 | 2019-11-13 | 19 | 104d |  | Бизнес-консультант | 8h | 800 |
| 21 | 1.4.5 | Определение финансовых требований |  | 2d | 2019-11-11 | 2019-11-12 | 15 | 0d |  | Бизнес-консультант | 16h | 1,600 |
| 22 | 1.4.6 | Оценка собственного соответствия |  | 1d | 2019-11-13 | 2019-11-13 | 21 | 0d |  | Руководитель | 8h | 800 |
| 23 | 1.4.7 | Оценка начальной рентабельности |  | 1d | 2019-11-14 | 2019-11-14 | 22 | 0d |  | Руководитель | 8h | 800 |
| 24 | 1.5 | Пересмотр и изменение стратегического плана |  | 2d | 2019-11-15 | 2019-11-18 | 23 | 0d |  |  |  |  |
| 25 | 1.6 | Подтверждение решения о продолжении | milestone | 0d | 2019-11-18 | 2019-11-18 | 24 | 0d |  |  |  |  |

| ID | WBS | Task | Type | Duration | Start | Finish | Predecessors | Baseline start | Baseline finish | Baseline duration | Total slack | Resources | Work | Cost |
| --- | --- | --- | --- | --- | --- | --- | --- | --- | --- | --- | --- | --- | --- | --- |
| 26 | 2 | **Этап 2 - Определение перспективности предприятия** |  | 27d | 2019-11-19 | 2019-12-25 |  | 2015-05-08 | 2015-06-15 | 27d | 0d |  | 192h | 19,200 |
| 27 | 2.1 | **Определение рынка** |  | 13d | 2019-11-19 | 2019-12-05 |  | 2015-05-08 | 2015-05-26 | 13d | 0d |  | 88h | 8,800 |
| 28 | 2.1.1 | Изучение имеющейся информации |  | 1d | 2019-11-19 | 2019-11-19 | 25 |  |  |  | 0d | Бизнес-консультант | 8h | 800 |
| 29 | 2.1.2 | Создание плана анализа рынка |  | 2d | 2019-11-20 | 2019-11-21 | 28 |  |  |  | 0d |  |  |  |
| 30 | 2.1.3 | Реализация плана анализа рынка |  | 5d | 2019-11-22 | 2019-11-28 | 29 |  |  |  | 0d | Бизнес-консультант | 40h | 4,000 |
| 31 | 2.1.4 | Оценка конкуренции |  | 2d | 2019-11-29 | 2019-12-02 | 30 |  |  |  | 0d | Бизнес-консультант | 16h | 1,600 |
| 32 | 2.1.5 | Суммирование сведений о рынке |  | 2d | 2019-12-03 | 2019-12-04 | 31 |  |  |  | 0d | Бизнес-консультант | 16h | 1,600 |
| 33 | 2.1.6 | Определение целевой ниши рынка |  | 1d | 2019-12-05 | 2019-12-05 | 32 |  |  |  | 0d | Бизнес-консультант | 8h | 800 |
| 34 | 2.2 | **Определение необходимых материалов и принадлежностей** |  | 7d | 2019-12-06 | 2019-12-16 |  | 2015-05-27 | 2015-06-04 | 7d | 0d |  | 56h | 5,600 |
| 35 | 2.2.1 | Выбор бизнес-подхода (из раздела "Оценка бизнес-подходов", расположенного выше) |  | 2d | 2019-12-06 | 2019-12-09 | 28SS, 33 |  |  |  | 0d | Руководитель | 16h | 1,600 |
| 36 | 2.2.2 | Определение ресурсов управления |  | 1d | 2019-12-10 | 2019-12-10 | 35 |  |  |  | 0d | Руководитель | 8h | 800 |
| 37 | 2.2.3 | Определение требований к персоналу |  | 1d | 2019-12-11 | 2019-12-11 | 36 |  |  |  | 0d | Руководитель | 8h | 800 |
| 38 | 2.2.4 | Определение необходимого сырья |  | 1d | 2019-12-12 | 2019-12-12 | 37 |  |  |  | 0d | Руководитель | 8h | 800 |
| 39 | 2.2.5 | Определение необходимых коммунальных услуг |  | 1d | 2019-12-13 | 2019-12-13 | 38 |  |  |  | 0d | Руководитель | 8h | 800 |
| 40 | 2.2.6 | Определение итоговых операционных расходов и составление финансового прогноза |  | 1d | 2019-12-16 | 2019-12-16 | 39 |  |  |  | 0d | Руководитель | 8h | 800 |
| 41 | 2.3 | **Оценка потенциальных рисков и доходов** |  | 6d | 2019-12-17 | 2019-12-24 |  | 2015-06-05 | 2015-06-12 | 6d | 0d |  | 48h | 4,800 |
| 42 | 2.3.1 | Оценка емкости и стабильности рынка |  | 2d | 2019-12-17 | 2019-12-18 | 40 |  |  |  | 0d | Руководитель | 16h | 1,600 |
| 43 | 2.3.2 | Оценка доступности необходимых ресурсов |  | 2d | 2019-12-19 | 2019-12-20 | 42 |  |  |  | 0d | Руководитель | 16h | 1,600 |
| 44 | 2.3.3 | Прогноз доходности |  | 2d | 2019-12-23 | 2019-12-24 | 43 |  |  |  | 0d | Бухгалтер | 16h | 1,600 |
| 45 | 2.4 | Пересмотр оценки перспективности предприятия |  | 1d | 2019-12-25 | 2019-12-25 | 44 |  |  |  | 0d |  |  |  |
| 46 | 2.5 | Подтверждение решения о продолжении | milestone | 0d | 2019-12-25 | 2019-12-25 | 45 |  |  |  | 0d | Бизнес-консультант; Коллеги по бизнесу; Юрист; Бухгалтер |  |  |
| 47 | 3 | **Этап 3 - Планирование деятельности** |  | 21d | 2019-12-26 | 2020-01-23 |  | 2015-06-16 | 2015-07-14 | 21d | 0d |  | 184h | 18,400 |
| 48 | 3.1 | **Разработка подробного 5-летнего бизнес-плана** |  | 21d | 2019-12-26 | 2020-01-23 |  | 2015-06-16 | 2015-07-14 | 21d | 0d |  | 184h | 18,400 |
| 49 | 3.1.1 | Описание представления и перспективы |  | 1d | 2019-12-26 | 2019-12-26 | 46 |  |  |  | 0d | Бизнес-консультант | 8h | 800 |
| 50 | 3.1.2 | Перечисление исходных положений |  | 1d | 2019-12-27 | 2019-12-27 | 49 |  |  |  | 0d | Бизнес-консультант | 8h | 800 |
| 51 | 3.1.3 | Описание рынка |  | 1d | 2019-12-30 | 2019-12-30 | 50 |  |  |  | 0d | Бизнес-консультант | 8h | 800 |
| 52 | 3.1.4 | Описание нового предприятия |  | 1d | 2019-12-31 | 2019-12-31 | 51 |  |  |  | 0d | Бизнес-консультант | 8h | 800 |
| 53 | 3.1.5 | Описание сильных и слабых сторон, активов и потенциальных опасностей |  | 1d | 2020-01-01 | 2020-01-01 | 52 |  |  |  | 0d | Бизнес-консультант | 8h | 800 |
| 54 | 3.1.6 | Предварительная оценка объема сбыта в начальный период |  | 1d | 2020-01-02 | 2020-01-02 | 53 |  |  |  | 0d | Бизнес-консультант; Бухгалтер | 16h | 1,600 |
| 55 | 3.1.7 | Прогноз эксплуатационных затрат |  | 1d | 2020-01-03 | 2020-01-03 | 54 |  |  |  | 0d | Бизнес-консультант; Бухгалтер | 16h | 1,600 |
| 56 | 3.1.8 | Выработка стратегии ценообразования |  | 1d | 2020-01-06 | 2020-01-06 | 55 |  |  |  | 0d | Бизнес-консультант | 8h | 800 |
| 57 | 3.1.9 | Прогноз прибыли |  | 1d | 2020-01-07 | 2020-01-07 | 56 |  |  |  | 0d | Бизнес-консультант | 8h | 800 |
| 58 | 3.1.10 | Составление предварительного финансового баланса |  | 2d | 2020-01-08 | 2020-01-09 | 57 |  |  |  | 0d | Бизнес-консультант | 16h | 1,600 |
| 59 | 3.1.11 | Анализ безубыточности |  | 1d | 2020-01-10 | 2020-01-10 | 58 |  |  |  | 0d | Бизнес-консультант | 8h | 800 |
| 60 | 3.1.12 | Разработка проекта движения средств |  | 1d | 2020-01-13 | 2020-01-13 | 59 |  |  |  | 0d | Бизнес-консультант | 8h | 800 |
| 61 | 3.1.13 | Определение требований лицензирования |  | 1d | 2020-01-14 | 2020-01-14 | 60 |  |  |  | 0d | Бизнес-консультант | 8h | 800 |
| 62 | 3.1.14 | Разработка плана начала деятельности |  | 2d | 2020-01-15 | 2020-01-16 | 61 |  |  |  | 0d | Бизнес-консультант | 16h | 1,600 |
| 63 | 3.1.15 | Разработка стратегии сбыта и маркетинга |  | 1d | 2020-01-17 | 2020-01-17 | 62 |  |  |  | 0d | Бизнес-консультант | 8h | 800 |
| 64 | 3.1.16 | Разработка структуры распространения |  | 1d | 2020-01-20 | 2020-01-20 | 63 |  |  |  | 0d | Бизнес-консультант | 8h | 800 |
| 65 | 3.1.17 | Описание рисков и перспектив |  | 2d | 2020-01-21 | 2020-01-22 | 64 |  |  |  | 0d | Бизнес-консультант | 16h | 1,600 |
| 66 | 3.1.18 | Публикация бизнес-плана |  | 1d | 2020-01-23 | 2020-01-23 | 65 |  |  |  | 0d | Бизнес-консультант | 8h | 800 |
| 67 | 3.1.19 | Подтверждение решения о продолжении | milestone | 0d | 2020-01-23 | 2020-01-23 | 66 |  |  |  | 0d | Бизнес-консультант |  |  |

| ID | WBS | Task | Type | Duration | Start | Finish | Predecessors | Baseline start | Baseline finish | Baseline duration | Total slack | Free slack | Resources | Work | Cost |
| --- | --- | --- | --- | --- | --- | --- | --- | --- | --- | --- | --- | --- | --- | --- | --- |
| 68 | 4 | **Этап 4 - Реализация плана начала деятельности** |  | 53d | 2020-01-24 | 2020-04-07 |  | 2015-07-15 | 2015-09-25 | 53d | 0d |  |  | 736h | 73,600 |
| 69 | 4.1 | Выбор местоположения |  | 1d | 2020-01-24 | 2020-01-24 | 67 |  |  |  | 0d |  |  |  |  |
| 70 | 4.2 | **Создание структуры предприятия** |  | 24d | 2020-01-27 | 2020-02-27 |  | 2015-07-16 | 2015-08-18 | 24d | 0d |  |  | 296h | 29,600 |
| 71 | 4.2.1 | **Выбор названия** |  | 2d | 2020-01-27 | 2020-01-28 |  | 2015-07-16 | 2015-07-17 | 2d | 0d |  |  | 16h | 1,600 |
| 72 | 4.2.1.1 | Оценка возможных последствий |  | 1d | 2020-01-27 | 2020-01-27 | 69 |  |  |  | 0d |  | Юрист | 8h | 800 |
| 73 | 4.2.1.2 | Выяснение доступности имени |  | 1d | 2020-01-28 | 2020-01-28 | 72 |  |  |  | 0d |  | Юрист | 8h | 800 |
| 74 | 4.2.2 | **Выбор банка** |  | 5d | 2020-01-29 | 2020-02-04 |  | 2015-07-20 | 2015-07-24 | 5d | 0d |  |  | 40h | 4,000 |
| 75 | 4.2.2.1 | Открытие счетов |  | 4d | 2020-01-29 | 2020-02-03 | 73 |  |  |  | 0d |  | Банкир | 32h | 3,200 |
| 76 | 4.2.2.2 | Открытие кредитной линии |  | 1d | 2020-02-04 | 2020-02-04 | 75 |  |  |  | 0d |  | Банкир | 8h | 800 |
| 77 | 4.2.3 | Выбор юридического представительства |  | 1d | 2020-02-05 | 2020-02-05 | 75SS, 76 |  |  |  | 0d |  | Юрист | 8h | 800 |
| 78 | 4.2.4 | Выбор категории налогообложения предприятия |  | 2d | 2020-02-06 | 2020-02-07 | 77 |  |  |  | 0d |  | Юрист; Бухгалтер | 32h | 3,200 |
| 79 | 4.2.5 | Выбор источника основного финансирования |  | 2d | 2020-02-10 | 2020-02-11 | 78 |  |  |  | 0d |  | Руководитель | 16h | 1,600 |
| 80 | 4.2.6 | Выделение основного финансирования | milestone | 0d | 2020-02-11 | 2020-02-11 | 79 |  |  |  | 13d | 0d | Руководитель |  |  |
| 81 | 4.2.7 | **Создание базы операционного контроля** |  | 12d | 2020-02-12 | 2020-02-27 |  | 2015-08-03 | 2015-08-18 | 12d | 13d |  |  | 144h | 14,400 |
| 82 | 4.2.7.1 | Выбор и внедрение системы бухгалтерского учета |  | 2d | 2020-02-12 | 2020-02-13 | 79, 80 |  |  |  | 13d | 0d | Бухгалтер | 16h | 1,600 |
| 83 | 4.2.7.2 | Получение необходимых лицензий и разрешений |  | 4d | 2020-02-14 | 2020-02-19 | 82 |  |  |  | 13d | 0d | Юрист; Государственное учреждение | 64h | 6,400 |
| 84 | 4.2.7.3 | Получение необходимых страховок |  | 4d | 2020-02-20 | 2020-02-25 | 83 |  |  |  | 13d | 0d | Бухгалтер | 32h | 3,200 |
| 85 | 4.2.7.4 | Выработка плана обеспечения безопасности |  | 2d | 2020-02-26 | 2020-02-27 | 84 |  |  |  | 13d | 0d | Бизнес-консультант; Юрист | 32h | 3,200 |
| 86 | 4.2.8 | **Разработка программы маркетинга** |  | 4d | 2020-01-28 | 2020-01-31 |  | 2015-07-17 | 2015-07-22 | 4d | 32d |  |  | 40h | 4,000 |
| 87 | 4.2.8.1 | Создание программы рекламирования |  | 2d | 2020-01-28 | 2020-01-29 | 73SS |  |  |  | 32d | 0d | Бизнес-консультант | 16h | 1,600 |
| 88 | 4.2.8.2 | Разработка эмблемы |  | 1d | 2020-01-30 | 2020-01-30 | 87 |  |  |  | 32d | 0d | Бизнес-консультант; Юрист | 16h | 1,600 |
| 89 | 4.2.8.3 | Заказ рекламных материалов |  | 1d | 2020-01-31 | 2020-01-31 | 88 |  |  |  | 32d | 19d | Бизнес-консультант | 8h | 800 |
| 90 | 4.3 | **Подготовка производственных помещений** |  | 15d | 2020-02-28 | 2020-03-19 |  | 2015-08-19 | 2015-09-08 | 15d | 13d |  |  | 120h | 12,000 |
| 91 | 4.3.1 | Выбор помещения |  | 5d | 2020-02-28 | 2020-03-05 | 85, 89 |  |  |  | 13d | 0d | Юрист | 40h | 4,000 |
| 92 | 4.3.2 | Выбор оборудования для компьютерной сети |  | 1d | 2020-03-06 | 2020-03-06 | 91 |  |  |  | 13d | 0d | Информационные службы | 8h | 800 |
| 93 | 4.3.3 | Выбор программного обеспечения для компьютеров |  | 1d | 2020-03-09 | 2020-03-09 | 92 |  |  |  | 13d | 0d | Информационные службы | 8h | 800 |
| 94 | 4.3.4 | Подключение коммуникаций |  | 3d | 2020-03-10 | 2020-03-12 | 93 |  |  |  | 13d | 0d | Руководитель | 24h | 2,400 |
| 95 | 4.3.5 | Приобретение мебели и оборудования |  | 4d | 2020-03-13 | 2020-03-18 | 94 |  |  |  | 13d | 0d | Руководитель | 32h | 3,200 |
| 96 | 4.3.6 | Переезд |  | 1d | 2020-03-19 | 2020-03-19 | 95 |  |  |  | 13d |  | Руководитель | 8h | 800 |

| ID | WBS | Task | Type | Duration | Start | Finish | Predecessors | Baseline start | Baseline finish | Baseline duration | Total slack | Resources | Work | Cost |
| --- | --- | --- | --- | --- | --- | --- | --- | --- | --- | --- | --- | --- | --- | --- |
| 97 | 4.4 | **Наем персонала** |  | 40d | 2020-02-12 | 2020-04-07 |  | 2015-08-03 | 2015-09-25 | 40d | 0d |  | 320h | 32,000 |
| 98 | 4.4.1 | Интервьюирование и тестирование кандидатов |  | 14d | 2020-02-12 | 2020-03-02 | 79 |  |  |  | 0d | Руководитель | 112h | 11,200 |
| 99 | 4.4.2 | Наем персонала |  | 10d | 2020-03-03 | 2020-03-16 | 98 |  |  |  | 0d | Руководитель | 80h | 8,000 |
| 100 | 4.4.3 | Обучение персонала |  | 16d | 2020-03-17 | 2020-04-07 | 99 |  |  |  | 0d | Руководитель | 128h | 12,800 |
| 101 | 4.5 | Начало деятельности | milestone | 0d | 2020-04-07 | 2020-04-07 | 96, 100 |  |  |  | 0d | Руководитель |  |  |
