# Проект_Девелопмент

Schedule from MS Project, 2019-10-17 to 2024-04-17.

## Calendars

- Стандартный: Mon-Fri 09:00-13:00, 14:00-18:00; Sat-Sun off.

## Resources

| Resource | Group | Unit |
| --- | --- | --- |
| Процент | Объем | Процент |
| Площадь | Объем | Кв.м. |
| Объем | Объем | Куб.м. |
| Длина | Объем | м. |
| Количество | Объем | шт. |
| Вес | Объем | т |

## Schedule

| ID | WBS | Task | Type | Duration | Start | Finish | Predecessors | Total slack |
| --- | --- | --- | --- | --- | --- | --- | --- | --- |
| 1 | 1 | Приобретение площадки | milestone | 0d | 2019-10-17 | 2019-10-17 |  | 0d |
| 2 | 2 | **ГПЗУ** |  | 154d | 2019-10-17 | 2020-05-19 |  | 0d |
| 3 | 2.1 | Приведение документов в соответствие с законодательством |  | 22d | 2019-10-17 | 2019-11-15 | 1 | 0d |
| 4 | 2.2 | Оформление прав на ЗУ |  | 44d | 2019-11-18 | 2020-01-16 | 3 | 0d |
| 5 | 2.3 | **ГЗК** |  | 66d | 2020-01-17 | 2020-04-17 |  | 0d |
| 6 | 2.3.1 | Предварительное раб.группа ГЗК (Тимофеев) |  | 22d | 2020-01-17 | 2020-02-17 | 4 | 0d |
| 7 | 2.3.2 | Рабочая группа ГЗК |  | 22d | 2020-02-18 | 2020-03-18 | 6 | 0d |
| 8 | 2.3.3 | Рассмотрение ГЗК |  | 22d | 2020-03-19 | 2020-04-17 | 7 | 0d |
| 9 | 2.4 | Подача документов в "одно окно" |  | 2d | 2020-04-20 | 2020-04-21 | 8 | 0d |
| 10 | 2.5 | ГПЗУ |  | 20d | 2020-04-22 | 2020-05-19 | 9 | 0d |
| 11 | 3 | ГПЗУ получен | milestone | 0d | 2020-05-19 | 2020-05-19 | 10 | 0d |
| 12 | 4 | **Проект** |  | 175d | 2020-05-20 | 2021-01-19 |  | 0d |
| 13 | 4.1 | **ИРД** |  | 44d | 2020-07-20 | 2020-09-17 |  | 88d |
| 14 | 4.1.1 | Геоподоснова |  | 22d | 2020-07-20 | 2020-08-18 | 20 | 110d |
| 15 | 4.1.2 | Геология |  | 33d | 2020-07-20 | 2020-09-02 | 20 | 99d |
| 16 | 4.1.3 | Экология |  | 33d | 2020-07-20 | 2020-09-02 | 20 | 99d |
| 17 | 4.1.4 | СТУ |  | 44d | 2020-07-20 | 2020-09-17 | 20 | 88d |
| 18 | 4.2 | **Стадия ПП** |  | 43d | 2020-05-20 | 2020-07-17 |  | 0d |
| 19 | 4.2.1 | Тех.задание |  | 10d | 2020-05-20 | 2020-06-02 | 11 | 0d |
| 20 | 4.2.2 | Концепция |  | 33d | 2020-06-03 | 2020-07-17 | 19 | 0d |
| 21 | 4.3 | Стадия П |  | 132d | 2020-07-20 | 2021-01-19 | 20 | 0d |
| 22 | 5 | Проект разработан | milestone | 0d | 2021-01-19 | 2021-01-19 | 14, 15, 16, 17, 21 | 0d |
| 23 | 6 | **Разрешение на строительство** |  | 229d | 2020-05-20 | 2021-04-05 |  | 0d |
| 24 | 6.1 | МГЭ |  | 44d | 2021-01-20 | 2021-03-22 | 22 | 0d |
| 25 | 6.2 | АГР |  | 22d | 2021-01-20 | 2021-02-18 | 22 | 22d |
| 26 | 6.3 | ЗУ под строительство |  | 66d | 2020-05-20 | 2020-08-19 | 11 | 153d |
| 27 | 6.4 | РС |  | 10d | 2021-03-23 | 2021-04-05 | 24, 25, 26 | 0d |
| 28 | 7 | Разрешение на строительство получено | milestone | 0d | 2021-04-05 | 2021-04-05 | 27 | 0d |

| ID | WBS | Task | Type | Duration | Start | Finish | Predecessors | Total slack | Free slack | Resources |
| --- | --- | --- | --- | --- | --- | --- | --- | --- | --- | --- |
| 29 | 8 | **Кредит** |  | 131d | 2021-01-20 | 2021-07-21 |  | 715d |  |  |
| 30 | 8.1 | Бизнес план |  | 33d | 2021-01-20 | 2021-03-05 | 22 | 736d | 21d |  |
| 31 | 8.2 | Кредитный комитет |  | 44d | 2021-04-06 | 2021-06-04 | 28, 30 | 715d | 0d |  |
| 32 | 8.3 | Выборка денежных средств |  | 33d | 2021-06-07 | 2021-07-21 | 31 | 715d | 0d |  |
| 33 | 9 | Финансирование открыто | milestone | 0d | 2021-07-21 | 2021-07-21 | 32 | 715d |  |  |
| 34 | 10 | **Открытие продаж** |  | 88d | 2021-04-06 | 2021-08-05 |  | 704d |  |  |
| 35 | 10.1 | Офис продаж |  | 88d | 2021-04-06 | 2021-08-05 | 28 | 704d |  |  |
| 36 | 10.2 | Оформление стройплощадки |  | 10d | 2021-04-06 | 2021-04-19 | 28 | 782d |  |  |
| 37 | 10.3 | Открытие адреса (регистрация ДДУ) |  | 22d | 2021-04-06 | 2021-05-05 | 28 | 770d | 0d |  |
| 38 | 11 | Продажи открыты | milestone | 0d | 2021-05-05 | 2021-05-05 | 37 | 770d |  |  |
| 39 | 12 | **СМР** |  | 584d | 2021-03-23 | 2023-06-16 |  | 10d |  |  |
| 40 | 12.1 | Снос строений |  | 22d | 2021-04-06 | 2021-05-05 | 28 | 0d |  | Процент [100 Процент] |
| 41 | 12.2 | Вынос сетей |  | 44d | 2021-05-06 | 2021-07-06 | 28, 40 | 0d |  | Процент [100 Процент] |
| 42 | 12.3 | Шпунт/стена в грунте |  | 88d | 2021-07-07 | 2021-11-05 | 28, 40, 41 | 0d |  | Длина [150 м.] |
| 43 | 12.4 | Котлован |  | 132d | 2021-11-08 | 2022-05-10 | 42 | 0d |  | Объем [30000 Куб.м.] |
| 44 | 12.5 | Монолит |  | 264d | 2022-05-11 | 2023-05-15 | 43 | 0d |  | Объем [50000 Куб.м.] |
| 45 | 12.6 | Фасад |  | 198d | 2022-09-14 | 2023-06-16 | 44SS+90d | 64d | 0d | Площадь [1000 Кв.м.] |
| 46 | 12.7 | **Отделка МОП** |  | 518d | 2021-03-23 | 2023-03-16 |  | 130d |  |  |
| 47 | 12.7.1 | Разработка дизайн-проект МОП |  | 44d | 2021-03-23 | 2021-05-21 | 24 | 472d | 342d |  |
| 48 | 12.7.2 | Отделка МОП |  | 132d | 2022-09-14 | 2023-03-16 | 44SS+90d, 47 | 130d | 42d | Площадь [10000 Кв.м.] |
| 49 | 12.8 | **Внутренние инженерные системы** |  | 198d | 2022-09-14 | 2023-06-16 |  | 64d |  |  |
| 50 | 12.8.1 | Электроснабжение |  | 198d | 2022-09-14 | 2023-06-16 | 44SS+90d | 64d | 0d | Процент [100 Процент] |
| 51 | 12.8.2 | ОВ (Отопление,Вентиляция) |  | 198d | 2022-09-14 | 2023-06-16 | 44SS+90d | 64d | 0d | Процент [100 Процент] |
| 52 | 12.8.3 | ВК (Водоснабжение, Канализация) |  | 198d | 2022-09-14 | 2023-06-16 | 44SS+90d | 64d | 0d | Процент [100 Процент] |
| 53 | 12.8.4 | Водосток |  | 198d | 2022-09-14 | 2023-06-16 | 44SS+90d | 64d | 0d | Процент [100 Процент] |
| 54 | 12.8.5 | Пожаротушение |  | 198d | 2022-09-14 | 2023-06-16 | 44SS+90d | 64d | 0d | Процент [100 Процент] |
| 55 | 12.8.6 | Холодоснабжение |  | 198d | 2022-09-14 | 2023-06-16 | 44SS+90d | 64d | 0d | Процент [100 Процент] |
| 56 | 12.8.7 | Слабые токи |  | 198d | 2022-09-14 | 2023-06-16 | 44SS+90d | 64d | 0d | Процент [100 Процент] |
| 57 | 13 | Дом построен | milestone | 0d | 2023-06-16 | 2023-06-16 | 50, 51, 52, 53, 54, 55, 56, 44, 45, 48 | 64d |  |  |

| ID | WBS | Task | Type | Duration | Start | Finish | Predecessors | Total slack | Free slack |
| --- | --- | --- | --- | --- | --- | --- | --- | --- | --- |
| 58 | 14 | **Наружные сети** |  | 688d | 2021-06-29 | 2024-02-15 |  | 44d |  |
| 59 | 14.1 | **Электроснабжение** |  | 688d | 2021-06-29 | 2024-02-15 |  | 44d |  |
| 60 | 14.1.1 | СМР ПКЛ и ТП |  | 264d | 2021-06-29 | 2022-07-01 | 28FS+60d | 314d | 0d |
| 61 | 14.1.2 | Договор на электроснабжение |  | 44d | 2023-12-18 | 2024-02-15 | 60, 88 | 44d | 0d |
| 62 | 14.2 | **Теплоснабжение** |  | 688d | 2021-06-29 | 2024-02-15 |  | 44d |  |
| 63 | 14.2.1 | СМР сети |  | 264d | 2021-06-29 | 2022-07-01 | 28FS+60d | 314d | 0d |
| 64 | 14.2.2 | Постоянный договор на тепло |  | 44d | 2023-12-18 | 2024-02-15 | 60, 88 | 44d | 0d |
| 65 | 14.3 | **Водоснабжение** |  | 688d | 2021-06-29 | 2024-02-15 |  | 44d |  |
| 66 | 14.3.1 | СМР сети |  | 264d | 2021-06-29 | 2022-07-01 | 28FS+60d | 314d | 0d |
| 67 | 14.3.2 | Договор на ВиК |  | 44d | 2023-12-18 | 2024-02-15 | 60, 88 | 44d | 0d |
| 68 | 14.4 | **Канализация** |  | 688d | 2021-06-29 | 2024-02-15 |  | 44d |  |
| 69 | 14.4.1 | СМР сети |  | 264d | 2021-06-29 | 2022-07-01 | 28FS+60d | 314d | 0d |
| 70 | 14.4.2 | Договор на ВиК |  | 44d | 2023-12-18 | 2024-02-15 | 60, 88 | 44d | 0d |
| 71 | 14.5 | **Водосток** |  | 688d | 2021-06-29 | 2024-02-15 |  | 44d |  |
| 72 | 14.5.1 | СМР сети |  | 264d | 2021-06-29 | 2022-07-01 | 28FS+60d | 314d | 0d |
| 73 | 14.5.2 | Договор на прием вод |  | 44d | 2023-12-18 | 2024-02-15 | 60, 88 | 44d | 0d |
| 74 | 15 | Сети подведены и включены | milestone | 0d | 2024-02-15 | 2024-02-15 | 61, 64, 67, 70, 73 | 44d |  |
| 75 | 16 | **Благоустройство** |  | 648d | 2021-03-23 | 2023-09-14 |  | 0d |  |
| 76 | 16.1 | Разработка дизайн-проект Благоустройства |  | 44d | 2021-03-23 | 2021-05-21 | 24 | 516d |  |
| 77 | 16.2 | Озеленение |  | 88d | 2023-05-16 | 2023-09-14 | 76, 44 | 0d |  |
| 78 | 16.3 | МАФ |  | 22d | 2023-05-16 | 2023-06-14 | 76, 44 | 66d |  |
| 79 | 16.4 | Транспортная ифраструктура |  | 264d | 2021-06-29 | 2022-07-01 | 28FS+60d | 314d |  |
| 80 | 16.5 | Навигация |  | 22d | 2023-05-16 | 2023-06-14 | 44 | 66d |  |
| 81 | 17 | Благоустройство выполнено | milestone | 0d | 2023-09-14 | 2023-09-14 | 77, 78, 79, 80 | 0d |  |

| ID | WBS | Task | Type | Duration | Start | Finish | Predecessors | Total slack |
| --- | --- | --- | --- | --- | --- | --- | --- | --- |
| 82 | 18 | **РВ** |  | 380d | 2022-07-04 | 2023-12-15 |  | 0d |
| 83 | 18.1 | Адресация объекта |  | 22d | 2023-05-16 | 2023-06-14 | 44 | 110d |
| 84 | 18.2 | Подготовка тех.планов на здания |  | 44d | 2023-05-16 | 2023-07-14 | 48, 44 | 88d |
| 85 | 18.3 | Подготовка тех.планов на сети |  | 44d | 2022-07-04 | 2022-09-01 | 60, 63, 66, 69, 72 | 314d |
| 86 | 18.4 | ЗОС |  | 44d | 2023-09-15 | 2023-11-15 | 57, 81 | 0d |
| 87 | 18.5 | РВ |  | 22d | 2023-11-16 | 2023-12-15 | 86, 83, 84, 85 | 0d |
| 88 | 19 | Дом сдан | milestone | 0d | 2023-12-15 | 2023-12-15 | 87 | 0d |
| 89 | 20 | **Собственность** |  | 44d | 2023-12-18 | 2024-02-15 |  | 0d |
| 90 | 20.1 | Кадастровый паспорт |  | 22d | 2023-12-18 | 2024-01-16 | 88 | 0d |
| 91 | 20.2 | Передача на регистрацию |  | 2d | 2024-01-17 | 2024-01-18 | 90 | 0d |
| 92 | 20.3 | Получение Св-ва ОГРП |  | 20d | 2024-01-19 | 2024-02-15 | 91 | 0d |
| 93 | 21 | Собственность оформлена | milestone | 0d | 2024-02-15 | 2024-02-15 | 92 | 0d |
| 94 | 22 | Передача объекта УК |  | 44d | 2023-12-18 | 2024-02-15 | 88 | 44d |
| 95 | 23 | **Земля** |  | 44d | 2024-02-16 | 2024-04-17 |  | 0d |
| 96 | 23.1 | передача ЗУ от Застройщика к новому собственнику |  | 44d | 2024-02-16 | 2024-04-17 | 93 | 0d |
| 97 | 24 | Проект реализован, фуршет | milestone | 0d | 2024-04-17 | 2024-04-17 | 94, 96 | 0d |
